# GreenhouseIOT

Schedule from MS Project, 2024-11-11 to 2025-02-21, costs in €.

## Calendars

- Estándar: Mon-Fri 09:00-13:00, 15:00-19:00; Sat-Sun off.

## Resources

| Resource | Unit | Rate |
| --- | --- | --- |
| Jefe de proyecto |  | 30 |
| Desarrollador frontend |  | 25 |
| Desarrollador backend |  | 25 |
| Encargado hardware |  | 25 |
| Impresora 3D | und | 319 |
| Plástico PLA | bobina 850g | 21 |
| Portatiles | und | 429 |
| Cableado | metros | 11.49 |
| DHT22 | und | 4.63 |
| Sensor temperatura del agua | und | 1.39 |
| Sensor TDS | und | 3.49 |
| Fuente de alimentación | und | 7.24 |
| Regulador de voltaje | und | 2.97 |
| Foco led | und | 5.79 |
| Tornillería | caja | 4.79 |
| LDR | und | 1.42 |
| Resistencias | caja | 2.92 |
| Modulo 4x Relé | und | 2.42 |
| Conexiones | caja | 9.8 |
| ESP32 S3 | und | 6.03 |
| ESP32 Cam | und | 7.49 |
| Contenedores | und | 4.5 |
| Oxigenador | und | 2.49 |
| Ventilador | und | 1.54 |
| Pegamento | caja | 3.5 |
| Tuercas inyección | caja | 3.99 |
| pcb | caja | 2.84 |
| lente 77mm | und | 6.36 |
| Nivel de agua | und | 2.79 |
| Soldador | kit | 21 |
| Otros |  | 5.5 |

## Schedule

| ID | WBS | Task | Duration | Start | Finish | Predecessors | Total slack | Free slack | Resources | Work | Cost |
| --- | --- | --- | --- | --- | --- | --- | --- | --- | --- | --- | --- |
| 1 | 1 | **Planificación inicial** | 16d | 2024-11-11 | 2024-12-02 |  | 0d |  |  | 160h | 6,356 |
| 2 | 1.1 | Definición de la idea | 5d | 2024-11-11 | 2024-11-15 |  | 0d |  | Jefe de proyecto | 40h | 1,200 |
| 3 | 1.2 | Diseño de la arquitectura base | 5d | 2024-11-18 | 2024-11-22 | 2 | 0d |  | Jefe de proyecto; Portatiles [4 und] | 40h | 2,916 |
| 4 | 1.3 | Configuraciones del repositorio de código | 2d | 2024-11-25 | 2024-11-26 | 3 | 0d |  | Jefe de proyecto | 16h | 480 |
| 5 | 1.4 | Creación de la arquitectura del proyecto | 4d | 2024-11-27 | 2024-12-02 | 4 | 0d |  | Jefe de proyecto; Desarrollador backend | 64h | 1,760 |
| 6 | 2 | **Creación del módulo** | 37d | 2024-12-03 | 2025-01-22 |  | 0d |  |  | 312h | 8,474.37 |
| 7 | 2.1 | Diseño del circuito eléctrico | 14d | 2024-12-03 | 2024-12-20 | 2, 5 | 0d |  | Encargado hardware | 112h | 2,800 |
| 8 | 2.2 | Montaje del circuito | 3d | 2025-01-03 | 2025-01-07 | 7 | 24d | 0d | Encargado hardware; Cableado [2 metros]; Conexiones [1 caja]; DHT22 [1 und]; ESP32 Cam [1 und]; ESP32 S3 [1 und]; Foco led [1 und]; Fuente de alimentación [1 und]; LDR [1 und]; lente 77mm [1 und]; Modulo 4x Relé [1 und]; Nivel de agua [1 und]; Oxigenador [1 und]; pcb [1 caja]; Regulador de voltaje [1 und]; Resistencias [1 caja]; Sensor TDS [1 und]; Sensor temperatura del agua [1 und]; Tornillería [0.5 caja]; Soldador [1 kit]; Tuercas inyección [0.5 caja]; Ventilador [1 und] | 24h | 719.98 |
| 9 | 2.3 | Diseño de la carcasa 3D | 4d | 2025-01-08 | 2025-01-13 | 8 | 24d | 0d | Encargado hardware; Jefe de proyecto | 64h | 1,760 |
| 10 | 2.4 | Impresión de la carcasa | 5d | 2025-01-16 | 2025-01-22 | 9 | 22d |  | Encargado hardware; Plástico PLA [3 bobina 850g]; Impresora 3D [1 und] | 40h | 1,382 |
| 11 | 2.5 | Montaje del módulo | 2d | 2025-01-14 | 2025-01-15 | 7, 9 | 27d |  | Encargado hardware; Tuercas inyección [0.5 caja]; Tornillería [0.5 caja]; Pegamento [1 caja]; Contenedores [1 und] | 16h | 412.39 |
| 12 | 2.6 | Programación del módulo | 7d | 2024-12-23 | 2024-12-31 | 7 | 6d | 0d | Encargado hardware | 56h | 1,400 |
| 13 | 3 | **Origen de datos** | 8d | 2025-02-04 | 2025-02-13 |  | 6d |  |  | 24h | 600 |
| 14 | 3.1 | Creación de la api de origen de datos | 2d | 2025-02-04 | 2025-02-05 | 12 | 6d | 0d | Desarrollador backend | 16h | 400 |
| 15 | 3.2 | Programación del productor Kafka | 1d | 2025-02-13 | 2025-02-13 | 14 | 6d |  | Desarrollador backend | 8h | 200 |
| 16 | 4 | **Persistencia de datos** | 5d | 2025-02-06 | 2025-02-12 |  | 0d |  |  | 40h | 1,000 |
| 17 | 4.1 | Diseño de la base de datos | 1d | 2025-02-06 | 2025-02-06 | 7 | 0d |  | Desarrollador backend | 8h | 200 |
| 18 | 4.2 | Creación de la base de datos | 1d | 2025-02-07 | 2025-02-07 | 17 | 0d |  | Desarrollador backend | 8h | 200 |
| 19 | 4.3 | Creación de api para la base de datos | 2d | 2025-02-10 | 2025-02-11 | 18 | 0d |  | Desarrollador backend | 16h | 400 |
| 20 | 4.4 | Programación del consumidor Kafka | 1d | 2025-02-12 | 2025-02-12 | 19 | 0d |  | Desarrollador backend | 8h | 200 |
| 21 | 5 | **Explotación de datos** | 54d | 2024-12-03 | 2025-02-14 |  | 5d |  |  | 224h | 5,880 |
| 22 | 5.1 | Boceto diseño gráfico de la aplicación web | 7d | 2024-12-03 | 2024-12-11 | 5 | 5d | 0d | Desarrollador frontend; Jefe de proyecto | 112h | 3,080 |
| 23 | 5.2 | Desarrollo estructura básica de la web | 7d | 2024-12-12 | 2024-12-20 | 22 | 5d | 0d | Desarrollador frontend | 56h | 1,400 |
| 24 | 5.3 | Visualización de datos de ultima lectura | 1d | 2024-12-26 | 2024-12-26 | 23 | 5d | 0d | Desarrollador frontend | 8h | 200 |
| 25 | 5.4 | Visualización de datos haciendo uso de graficas | 1d | 2024-12-23 | 2024-12-23 | 23 | 8d | 3d | Desarrollador frontend | 8h | 200 |
| 26 | 5.5 | Paneles de configuración para automatizaciones | 2d | 2024-12-27 | 2024-12-30 | 24, 25 | 5d | 0d | Desarrollador frontend | 16h | 400 |
| 27 | 5.6 | Lógica de gestión de múltiples módulos | 3d | 2025-01-01 | 2025-02-14 | 26 | 5d |  | Desarrollador backend; Desarrollador frontend | 24h | 600 |

| ID | WBS | Task | Type | Duration | Start | Finish | Predecessors | Total slack | Free slack | Resources | Work | Cost |
| --- | --- | --- | --- | --- | --- | --- | --- | --- | --- | --- | --- | --- |
| 28 | 6 | **Sistema de recomendaciones personalizadas** |  | 25d | 2024-12-31 | 2025-02-03 |  | 14d |  |  | 224h | 5,600 |
| 29 | 6.1 | Pagina dedicada para imágenes de los módulos |  | 1d | 2024-12-31 | 2024-12-31 | 26 | 14d | 0d | Desarrollador frontend | 8h | 200 |
| 30 | 6.2 | Desarrollo de la sección de peticiones y recomendaciones |  | 14d | 2025-01-01 | 2025-01-20 | 29 | 14d | 0d | Desarrollador backend | 112h | 2,800 |
| 31 | 6.3 | Sistema de envío de petición personalizada |  | 7d | 2025-01-21 | 2025-01-29 | 30 | 14d | 0d | Desarrollador backend | 56h | 1,400 |
| 32 | 6.4 | Visualización de recomendación personalizada para el usuario |  | 3d | 2025-01-30 | 2025-02-03 | 31 | 14d |  | Desarrollador backend; Desarrollador frontend | 48h | 1,200 |
| 33 | 7 | **Control de calidad** |  | 45d | 2024-12-23 | 2025-02-21 |  | 0d |  |  | 112h | 2,800 |
| 34 | 7.1 | Creación test automáticos para Apis |  | 7d | 2024-12-23 | 2024-12-31 | 23 | 38d |  | Desarrollador backend | 56h | 1,400 |
| 35 | 7.2 | Creación test automáticos para la web |  | 7d | 2025-02-13 | 2025-02-21 | 20 | 0d |  | Desarrollador frontend | 56h | 1,400 |
| 36 | 8 | HITO: Entrega del proyecto | milestone | 0d | 2025-02-21 | 2025-02-21 | 1, 6, 13, 16, 21, 28, 33 | 0d |  |  |  |  |
